# Cronograma de actividades del proyecto (Diagrama de Gantt)

Schedule from MS Project XML, 2026-02-09 to 2026-11-27.

## Calendars

- Estándar: Mon-Fri 08:00-12:00, 13:00-17:00; Sat-Sun off.

## Resources

| Resource |
| --- |
| Samuel Loyo |
| Anthony Escobar |
| Gabriel Aguilar |
| Rosmel Briceño |
| Equipo de Proyecto |

## Schedule

| ID | WBS | Task | Duration | Start | Finish | Predecessors | Constraint | Resources | Work |
| --- | --- | --- | --- | --- | --- | --- | --- | --- | --- |
| 1 | 1 | **I: Análisis** | 15d | 2026-02-09 | 2026-02-27 |  |  |  | 224h |
| 2 | 1.1 | **1.1 Análisis de requerimientos** | 15d | 2026-02-09 | 2026-02-27 |  |  |  | 224h |
| 3 | 1.1.1 | 1.1.1 Diagnóstico de la comunidad y levantamiento de información | 7d | 2026-02-09 | 2026-02-17 |  |  | Anthony Escobar; Gabriel Aguilar; Rosmel Briceño | 168h |
| 4 | 1.1.2 | 1.1.2 Definición de requerimientos | 7d | 2026-02-19 | 2026-02-27 | 3FS+1d |  | Samuel Loyo | 56h |
| 5 | 2 | **II: Factibilidad** | 5d | 2026-03-02 | 2026-03-06 |  |  |  | 104h |
| 6 | 2.1 | **2.1 Estudio de factibilidad** | 5d | 2026-03-02 | 2026-03-06 |  |  |  | 104h |
| 7 | 2.1.1 | 2.1.1 Factibilidad técnica | 3d | 2026-03-02 | 2026-03-04 | 4 |  | Anthony Escobar | 24h |
| 8 | 2.1.2 | 2.1.2 Factibilidad económica | 3d | 2026-03-02 | 2026-03-04 | 7SS |  | Gabriel Aguilar | 24h |
| 9 | 2.1.3 | 2.1.3 Factibilidad operativa | 3d | 2026-03-02 | 2026-03-04 | 8SS |  | Rosmel Briceño | 24h |
| 10 | 2.1.4 | 2.1.4 Análisis de riesgos y alternativas | 1d | 2026-03-05 | 2026-03-05 | 9 |  | Anthony Escobar; Gabriel Aguilar | 16h |
| 11 | 2.1.5 | 2.1.5 Informe y conclusiones de factibilidad | 1d | 2026-03-06 | 2026-03-06 | 10 |  | Anthony Escobar; Gabriel Aguilar | 16h |
| 12 | 3 | **III: Diseño y modelado** | 30d | 2026-03-09 | 2026-04-17 |  |  |  | 240h |
| 13 | 3.1 | **3.1 Modelado del sistema** | 20d | 2026-03-09 | 2026-04-03 |  |  |  | 160h |
| 14 | 3.1.1 | 3.1.1 Casos de uso | 10d | 2026-03-09 | 2026-03-20 | 11 |  | Samuel Loyo | 80h |
| 15 | 3.1.2 | 3.1.2 Modelo de datos | 10d | 2026-03-23 | 2026-04-03 | 14 |  | Samuel Loyo | 80h |
| 16 | 3.2 | **3.2 Diseño de interfaz** | 10d | 2026-04-06 | 2026-04-17 |  |  |  | 80h |
| 17 | 3.2.1 | 3.2.1 Diseño lógico | 10d | 2026-04-06 | 2026-04-17 | 15 |  | Samuel Loyo | 80h |
| 18 | 4 | **IV: Desarrollo e implementación** | 108d | 2026-04-20 | 2026-09-16 |  |  |  | 1720h |
| 19 | 4.1 | **4.1 Configuración del entorno** | 15d | 2026-04-20 | 2026-05-08 |  |  |  | 120h |
| 20 | 4.1.1 | 4.1.1 Configuración del entorno de desarrollo | 5d | 2026-04-20 | 2026-04-24 | 17 |  | Samuel Loyo | 40h |
| 21 | 4.1.2 | 4.1.2 Módulo de inicio de sesión | 10d | 2026-04-27 | 2026-05-08 | 20 |  | Samuel Loyo | 80h |
| 22 | 4.2 | **4.2 Módulos del sistema** | 93d | 2026-05-11 | 2026-09-16 |  |  |  | 1600h |
| 23 | 4.2.1 | 4.2.1 Módulo de marcación | 20d | 2026-05-11 | 2026-06-05 | 21 |  | Samuel Loyo | 160h |
| 24 | 4.2.2 | 4.2.2 Módulo de empleados | 20d | 2026-06-08 | 2026-07-03 | 23 |  | Samuel Loyo | 160h |
| 25 | 4.2.3 | 4.2.3 Módulo de asistencia | 30d | 2026-07-06 | 2026-08-14 | 24 |  | Rosmel Briceño | 240h |
| 26 | 4.2.4 | 4.2.4 Módulo de pagos | 57d | 2026-05-11 | 2026-07-28 |  | start no earlier than 2026-05-11 | Gabriel Aguilar | 456h |
| 27 | 4.2.5 | 4.2.5 Módulo de conceptos | 25d | 2026-05-11 | 2026-06-12 |  | start no earlier than 2026-05-11 | Anthony Escobar | 200h |
| 28 | 4.2.6 | 4.2.6 Módulo de liquidaciones | 25d | 2026-06-15 | 2026-07-17 | 27 |  | Anthony Escobar | 200h |
| 29 | 4.2.7 | 4.2.7 Módulo de reportes | 23d | 2026-08-17 | 2026-09-16 | 25, 26, 28 |  | Gabriel Aguilar | 184h |

| ID | WBS | Task | Duration | Start | Finish | Predecessors | Resources | Work |
| --- | --- | --- | --- | --- | --- | --- | --- | --- |
| 30 | 5 | **V: Pruebas, instalación e implantación y evaluación** | 63d | 2026-09-02 | 2026-11-27 |  |  | 560h |
| 31 | 5.1 | **5.1 Pruebas** | 20d | 2026-09-02 | 2026-09-29 |  |  | 160h |
| 32 | 5.1.1 | 5.1.1 Pruebas unitarias | 20d | 2026-09-02 | 2026-09-29 | 29SS+12d | Samuel Loyo | 160h |
| 33 | 5.2 | **5.2 Instalación** | 17d | 2026-10-01 | 2026-10-23 |  |  | 136h |
| 34 | 5.2.1 | 5.2.1 Preparación y verificación | 3d | 2026-10-01 | 2026-10-05 | 32FS+1d | Samuel Loyo | 24h |
| 35 | 5.2.2 | 5.2.2 Instalación de software base | 2d | 2026-10-06 | 2026-10-07 | 34 | Samuel Loyo | 16h |
| 36 | 5.2.3 | 5.2.3 Despliegue del sistema | 4d | 2026-10-08 | 2026-10-13 | 35 | Samuel Loyo | 32h |
| 37 | 5.2.4 | 5.2.4 Pruebas de configuración de la instalación | 8d | 2026-10-14 | 2026-10-23 | 36 | Samuel Loyo | 64h |
| 38 | 5.3 | **5.3 Implantación, aceptación y capacitación** | 23d | 2026-10-26 | 2026-11-25 |  |  | 248h |
| 39 | 5.3.1 | 5.3.1 Preparación del proyecto | 1d | 2026-10-26 | 2026-10-26 | 37 | Samuel Loyo | 8h |
| 40 | 5.3.2 | 5.3.2 Acondicionamiento de instalaciones | 3d | 2026-10-27 | 2026-10-29 | 39 | Samuel Loyo | 24h |
| 41 | 5.3.3 | 5.3.3 Pruebas | 5d | 2026-10-27 | 2026-11-02 | 40SS | Samuel Loyo | 40h |
| 42 | 5.3.4 | 5.3.4 Capacitación del personal | 5d | 2026-10-27 | 2026-11-02 | 41SS | Samuel Loyo | 40h |
| 43 | 5.3.5 | **5.3.5 Puesta en marcha** | 17d | 2026-11-03 | 2026-11-25 |  |  | 136h |
| 44 | 5.3.5.1 | 5.3.5.1 Operación paralela del sistema con el sistema manual (15 días) | 15d | 2026-11-03 | 2026-11-23 | 42 | Samuel Loyo | 120h |
| 45 | 5.3.5.2 | 5.3.5.2 Análisis de resultados y corrección de errores | 1d | 2026-11-24 | 2026-11-24 | 44 | Samuel Loyo | 8h |
| 46 | 5.3.5.3 | 5.3.5.3 Arranque del sistema | 1d | 2026-11-25 | 2026-11-25 | 45 | Samuel Loyo | 8h |
| 47 | 5.4 | **5.4 Evaluación** | 2d | 2026-11-26 | 2026-11-27 |  |  | 16h |
| 48 | 5.4.1 | 5.4.1 Evaluación | 2d | 2026-11-26 | 2026-11-27 | 46 | Samuel Loyo | 16h |
